# ARKartSmart

How a schedule from MS Project changed from version to version. A marks actual dates.

## Version 1 (saved 2015-04-25)

Note of the change: Adding base Project2013 file again 3

| ID | WBS | Task | Duration | Start | Finish | Predecessors | Total float |
| --- | --- | --- | --- | --- | --- | --- | --- |
| 1 | 1 | **Hardware, etc** | 195.75d | 2015-11-02 | 2016-08-02 |  | 0d |
| 2 | 1.1 | **Tablets** | 97.25d | 2015-11-02 | 2016-03-16 |  | 89.75d |
| 3 |  | Order Nexus 9 Tablets | 8h | 2015-11-02 | 2015-11-03 |  | 89.75d |
| 4 |  | Install Custom ROM | 40h | 2015-11-03 | 2015-11-10 | 3 | 89.75d |
| 5 |  | Inspect & Test | 40h | 2015-11-10 | 2015-11-17 | 4 | 89.75d |
| 6 |  | Test Network Connectivity | 20h | 2015-11-17 | 2015-11-19 | 5, 16 | 89.75d |
| 7 |  | Integrate with ARKSmart Network | 20h | 2015-11-20 | 2015-11-24 | 6 | 89.75d |
| 8 |  | Mount on Carts | 650h | 2015-11-24 | 2016-03-16 | 26, 7 | 89.75d |
| 9 | 1.2 | **Servers** | 7.5d | 2015-11-02 | 2015-11-11 |  | 93.25d |
| 10 |  | Purchase HQ Hardware | 8h | 2015-11-02 | 2015-11-03 |  | 93.25d |
| 11 |  | Purchase Store Hardware | 8h | 2015-11-02 | 2015-11-03 |  | 93.25d |
| 12 |  | Rack Mount Hardware | 12h | 2015-11-03 | 2015-11-04 | 10, 11 | 93.25d |
| 13 |  | Install OS | 12h | 2015-11-05 | 2015-11-06 | 12 | 93.25d |
| 14 |  | Patch OS | 12h | 2015-11-06 | 2015-11-09 | 13 | 93.25d |
| 15 |  | Configure Rack Mounted Networking | 8h | 2015-11-10 | 2015-11-10 | 14 | 93.25d |
| 16 |  | Test Rack Mounted Network Connectivity | 8h | 2015-11-11 | 2015-11-11 | 15 | 93.25d |
| 17 | 1.3 | **Barcode Scanners** | 34.75d | 2015-11-02 | 2015-12-21 |  | 152.25d |
| 18 |  | Purchase | 8h | 2015-11-02 | 2015-11-03 |  | 156d |
| 19 |  | Inspect & Test | 40h | 2015-11-03 | 2015-11-10 | 18 | 156d |
| 20 |  | Mount on Carts | 200h | 2015-11-16 | 2015-12-21 | 26, 19 | 152.25d |
| 21 | 1.4 | **Charging Stations** | 12.25d | 2015-11-02 | 2015-11-18 |  | 183.5d |
| 22 |  | Purchase | 8h | 2015-11-02 | 2015-11-03 |  | 183.5d |
| 23 |  | Assemble | 40h | 2015-11-03 | 2015-11-10 | 22 | 183.5d |
| 24 |  | Install | 40h | 2015-11-10 | 2015-11-17 | 23 | 183.5d |
| 25 |  | Test | 10h | 2015-11-17 | 2015-11-18 | 24 | 183.5d |
| 26 | 1.5 | **Cart Mounting** | 9.75d | 2015-11-02 | 2015-11-16 |  | 96d |
| 27 |  | Purchase Hardware | 8h | 2015-11-02 | 2015-11-03 |  | 96d |
| 28 |  | Inspect Hardware | 70h | 2015-11-03 | 2015-11-16 | 27 | 96d |
| 29 | 1.6 | **ARKSMart Employee Training** | 8.75d | 2016-07-20 | 2016-08-02 | 85 | 0d |
| 30 |  | Tablet & Barcode Scanner Operation | 70h | 2016-07-20 | 2016-08-02 | 2, 17 | 0d |
| 31 |  | Tablet Repair/Replacement | 20h | 2016-07-20 | 2016-07-22 | 2 | 6.25d |
| 32 |  | Barcode Scanner Replacement | 10h | 2016-07-20 | 2016-07-21 | 17 | 7.5d |
| 33 | 1.7 | **Branding** | 36d | 2015-11-02 | 2015-12-22 |  | 159.75d |
| 34 |  | Tablet Branding Design | 80h | 2015-11-02 | 2015-11-16 |  | 159.75d |
| 35 |  | Order/Purchase Branding for Tablets | 8h | 2015-11-16 | 2015-11-17 | 34 | 159.75d |
| 36 |  | Install Tablet Branding | 200h | 2015-11-17 | 2015-12-22 | 5, 35 | 159.75d |
| 37 | 1.8 | **Documentation** | 157.5d | 2015-11-12 | 2016-06-20 |  | 30.75d |
| 38 |  | ARKSmart Network Configuration | 40h | 2015-11-12 | 2015-11-18 | 9 | 183.25d |
| 39 |  | Software User Guide | 40h | 2016-06-13 | 2016-06-20 | 69 | 30.75d |
| 40 | 2 | **Software** | 187d | 2015-11-02 | 2016-07-20 |  | 0d |
| 41 | 2.1 | **Agile Sprint 1 - Software Requirements** | 2.5d | 2015-11-02 | 2015-11-04 |  | 0d |
| 42 |  | Develop Software Requirements | 16h | 2015-11-02 | 2015-11-04 |  | 0d |
| 43 |  | Work Product Inspection (WPI) - Software Requirements Review | 4h | 2015-11-04 | 2015-11-04 | 42 | 0d |
| 44 | 2.2 | **Agile Sprint 2 - Software Architecture/Design** | 6d | 2015-11-05 | 2015-11-12 | 41 | 0d |
| 45 |  | Develop/Customize Architecture/Design | 40h | 2015-11-05 | 2015-11-11 |  | 0d |
| 46 |  | WPI - Software Design Review | 8h | 2015-11-12 | 2015-11-12 | 45 | 0d |
| 47 |  | COTS Selection/Approval | 20h | 2015-11-05 | 2015-11-09 |  | 3.5d |
| 48 | 2.3 | **Agile Sprint 3 - Software Environment** | 2.5d | 2015-11-13 | 2015-11-17 | 44 | 0d |
| 49 |  | Software Lab Environment Setup | 16h | 2015-11-13 | 2015-11-16 |  | 0d |
| 50 |  | Software Lab Environment Validation | 4h | 2015-11-17 | 2015-11-17 | 49 | 0d |
| 51 |  | Test Tool Selection/Approval/Development | 16h | 2015-11-13 | 2015-11-16 |  | 0.5d |
| 52 | 2.4 | **Agile Sprint 4 - Inventory System** | 44.5d | 2015-11-17 | 2016-01-18 | 48 | 0d |
| 53 |  | Inventory System Integration Development | 280h | 2015-11-17 | 2016-01-05 |  | 0d |
| 54 | 2.4.2 | **Testing** | 9d | 2016-01-05 | 2016-01-18 | 53 | 0d |
| 55 |  | Unit Level Testing | 48h | 2016-01-05 | 2016-01-13 |  | 0d |
| 56 |  | Component Level Testing | 24h | 2016-01-13 | 2016-01-18 | 55 | 0d |
| 57 |  | WPI & Demo | 4h | 2016-01-18 | 2016-01-18 | 54 | 0d |
| 58 | 2.5 | **Agile Sprint 5 - Customer Loyalty** | 44.5d | 2016-01-19 | 2016-03-21 | 52 | 0d |
| 59 |  | Customer Loyalty System Integration Development | 280h | 2016-01-19 | 2016-03-07 |  | 0d |
| 60 | 2.5.2 | **Testing** | 9d | 2016-03-08 | 2016-03-18 | 59 | 0d |
| 61 |  | Unit Level Testing | 48h | 2016-03-08 | 2016-03-15 |  | 0d |
| 62 |  | Component Level Testing | 24h | 2016-03-16 | 2016-03-18 | 61 | 0d |
| 63 |  | WPI & Demo | 4h | 2016-03-21 | 2016-03-21 | 60 | 0d |
| 64 | 2.6 | **Agile Sprint 6 - Integration/Test** | 10.5d | 2016-03-21 | 2016-04-04 | 58 | 0d |
| 65 | 2.6.1 | **System Level Integration Testing** | 10d | 2016-03-21 | 2016-04-04 |  | 0d |
| 66 |  | Customer Loyalty System Integration Testing | 40h | 2016-03-21 | 2016-03-28 |  | 0d |
| 67 |  | Inventory System Integration Testing | 40h | 2016-03-28 | 2016-04-04 | 66 | 0d |
| 68 |  | WPI & Demo | 4h | 2016-04-04 | 2016-04-04 | 65 | 0d |
| 69 | 2.7 | **Agile Sprint 7 - OCF Smart Cart Software** | 49.5d | 2016-04-05 | 2016-06-13 | 64 | 0d |
| 70 |  | OCF Smart Cart System Integration Development | 280h | 2016-04-05 | 2016-05-23 |  | 0d |

| ID | WBS | Task | Duration | Start | Finish | Predecessors | Total float |
| --- | --- | --- | --- | --- | --- | --- | --- |
| 71 |  | Software Customization | 40h | 2016-05-24 | 2016-05-30 | 70 | 0d |
| 72 | 2.7.3 | **Testing** | 9d | 2016-05-31 | 2016-06-10 | 71 | 0d |
| 73 |  | Unit Level Testing | 48h | 2016-05-31 | 2016-06-07 |  | 0d |
| 74 |  | Component Level Testing | 24h | 2016-06-08 | 2016-06-10 | 73 | 0d |
| 75 |  | WPI & Demo | 4h | 2016-06-13 | 2016-06-13 | 72 | 0d |
| 76 | 2.8 | **Agile Sprint 8 - OCF Integration/Test** | 5.5d | 2016-06-13 | 2016-06-20 | 69 | 0d |
| 77 | 2.8.1 | **System Level Integration Testing** | 5d | 2016-06-13 | 2016-06-20 |  | 0d |
| 78 |  | OCF Smart Cart System Integration Testing | 40h | 2016-06-13 | 2016-06-20 |  | 0d |
| 79 |  | WPI & Demo | 4h | 2016-06-20 | 2016-06-20 | 77 | 0d |
| 80 | 2.9 | **Agile Sprint 9 - Software Installation** | 11.5d | 2016-06-21 | 2016-07-06 | 76 | 0d |
| 81 |  | Install Customer Loyalty System Integration Software | 40h | 2016-06-21 | 2016-06-27 |  | 0d |
| 82 |  | Install Inventory System Integration Software | 40h | 2016-06-28 | 2016-07-04 | 81 | 0d |
| 83 |  | Install OCF Smart Cart Softtware | 8h | 2016-07-05 | 2016-07-05 | 82 | 0d |
| 84 |  | WPI & Demo | 4h | 2016-07-06 | 2016-07-06 | 83 | 0d |
| 85 |  | Acceptance Testing | 80h | 2016-07-06 | 2016-07-20 | 80 | 0d |

## Version 2 (saved 2015-04-26)

Last finish 2016-08-02 → 2016-08-09 (+7d).

Changed:

| ID | Task | Start | Finish | Duration | Total float | Predecessors | Other |
| --- | --- | --- | --- | --- | --- | --- | --- |
| 1 | **Hardware, etc** |  | 2016-08-02 → 2016-08-09 (+7d) | 195.75d → 201d |  |  |  |
| 2 | **Tablets** |  |  | 97.25d → 97d | 89.75d → 92.5d |  |  |
| 3 | Order Nexus 9 Tablets |  |  |  | 89.75d → 92.5d |  | resources none → Project Manager |
| 4 | Install Custom ROM |  |  |  | 89.75d → 92.5d |  | resources none → Senior Software Engineer |
| 5 | Inspect & Test |  |  |  | 89.75d → 92.5d |  | resources none → Installation Support |
| 6 | Test Network Connectivity |  |  |  | 89.75d → 92.5d |  | resources none → Network Engineer |
| 7 | Integrate with ARKSmart Network |  |  |  | 89.75d → 92.5d |  | resources none → Network Engineer |
| 8 | Mount on Carts |  |  | 650h → 648h | 89.75d → 92.5d |  | resources none → Installation Support |
| 10 | Purchase HQ Hardware |  |  |  |  |  | resources none → Project Manager |
| 11 | Purchase Store Hardware |  |  |  |  |  | resources none → Project Manager |
| 12 | Rack Mount Hardware |  |  |  |  |  | resources none → Systems Administrator |
| 13 | Install OS |  |  |  |  |  | resources none → Systems Administrator |
| 14 | Patch OS |  |  |  |  |  | resources none → Systems Administrator |
| 15 | Configure Rack Mounted Networking |  |  |  | 93.25d → 96d |  | resources none → Network Engineer |
| 16 | Test Rack Mounted Network Connectivity |  |  |  | 93.25d → 96d |  | resources none → Network Engineer |
| 17 | **Barcode Scanners** |  |  | 34.75d → 35d | 152.25d → 154.5d |  |  |
| 18 | Purchase |  |  |  | 156d → 158.5d |  | resources none → Project Manager |
| 19 | Inspect & Test |  |  |  | 156d → 158.5d |  | resources none → Installation Support |
| 20 | Mount on Carts |  |  |  | 152.25d → 154.5d |  | resources none → Installation Support |
| 21 | **Charging Stations** |  |  | 12.25d → 12.5d | 183.5d → 188.5d |  |  |
| 22 | Purchase |  |  |  |  |  | resources none → Project Manager |
| 23 | Assemble |  |  |  |  |  | resources none → Installation Support |
| 24 | Install |  |  |  |  |  | resources none → Installation Support |
| 25 | Test |  |  | 10h → 12h | 183.5d → 188.5d |  | resources none → Installation Support |
| 26 | **Cart Mounting** |  |  | 9.75d → 10d | 96d → 98.5d |  |  |
| 27 | Purchase Hardware |  |  |  |  |  | resources none → Project Manager |
| 28 | Inspect Hardware |  |  | 70h → 72h | 96d → 98.5d |  | resources none → Installation Support |
| 29 | **ARKSMart Employee Training** | 2016-07-20 → 2016-07-25 (+5d) | 2016-08-02 → 2016-08-09 (+7d) | 8.75d → 11.5d |  |  |  |
| 30 | Tablet & Barcode Scanner Operation | 2016-07-20 → 2016-07-25 (+5d) | 2016-08-02 → 2016-08-04 (+2d) | 70h → 72h |  |  | resources none → Software Team |
| 31 | Tablet Repair/Replacement | 2016-07-20 → 2016-08-05 (+16d) | 2016-07-22 → 2016-08-09 (+18d) |  | 6.25d → 0d | 2 → 2, 30 | resources none → Software Team |
| 32 | Barcode Scanner Replacement | 2016-07-20 → 2016-08-05 (+16d) | 2016-07-21 → 2016-08-08 (+18d) |  | 7.5d → 1.25d | 17 → 17, 30 | resources none → Software Team |
| 34 | Tablet Branding Design |  |  |  |  |  | resources none → Senior Software Engineer |
| 35 | Order/Purchase Branding for Tablets |  |  |  |  |  | resources none → Project Manager |
| 36 | Install Tablet Branding |  |  |  | 159.75d → 165d |  | resources none → Installation Support |
| 38 | ARKSmart Network Configuration |  |  |  | 183.25d → 188.5d |  | resources none → Network Engineer |
| 39 | Software User Guide |  |  |  | 30.75d → 36d |  | resources none → Software Team |
| 40 | **Software** |  | 2016-07-20 → 2016-07-22 (+2d) | 187d → 189.5d |  |  |  |
| 42 | Develop Software Requirements |  |  |  |  |  | resources none → Senior Software Engineer |
| 43 | Work Product Inspection (WPI) - Software Requirements Review |  |  |  |  |  | resources none → Software Team |
| 45 | Develop/Customize Architecture/Design |  |  |  |  |  | resources none → Senior Software Engineer |
| 46 | WPI - Software Design Review |  |  |  |  |  | resources none → Software Team |
| 47 | COTS Selection/Approval |  |  |  |  |  | resources none → Senior Software Engineer |
| 49 | Software Lab Environment Setup |  |  |  |  |  | resources none → Software Team |
| 50 | Software Lab Environment Validation |  |  |  |  |  | resources none → Software Team |
| 51 | Test Tool Selection/Approval/Development |  |  |  |  |  | resources none → Software Team |
| 53 | Inventory System Integration Development |  |  |  |  |  | resources none → Senior Software Engineer |
| 55 | Unit Level Testing |  |  |  |  |  | resources none → Senior Software Engineer |
| 56 | Component Level Testing |  |  |  |  |  | resources none → Software Team |
| 57 | WPI & Demo |  |  |  |  |  | resources none → Software Team |
| 59 | Customer Loyalty System Integration Development |  |  |  |  |  | resources none → Senior Software Engineer |
| 61 | Unit Level Testing |  |  |  |  |  | resources none → Senior Software Engineer |
| 62 | Component Level Testing |  |  |  |  |  | resources none → Software Team |
| 63 | WPI & Demo |  |  |  |  |  | resources none → Software Team |
| 66 | Customer Loyalty System Integration Testing |  |  |  |  |  | resources none → Software Team |
| 67 | Inventory System Integration Testing |  |  |  |  |  | resources none → Software Team |
| 68 | WPI & Demo |  |  |  |  |  | resources none → Software Team |
| 70 | OCF Smart Cart System Integration Development |  |  |  |  |  | resources none → Senior Software Engineer |
| 71 | Software Customization |  |  |  |  |  | resources none → Senior Software Engineer |
| 73 | Unit Level Testing |  |  |  |  |  | resources none → Senior Software Engineer |
| 74 | Component Level Testing |  |  |  |  |  | resources none → Software Team |
| 75 | WPI & Demo |  |  |  |  |  | resources none → Software Team |
| 78 | OCF Smart Cart System Integration Testing |  |  |  |  |  | resources none → Senior Software Engineer |
| 79 | WPI & Demo |  |  |  |  |  | resources none → Software Team |
| 80 | **Agile Sprint 9 - Software Installation** |  | 2016-07-06 → 2016-07-08 (+2d) | 11.5d → 14d |  |  |  |
| 81 | Install Customer Loyalty System Integration Software |  |  |  |  |  | resources none → Software Team |
| 82 | Install Inventory System Integration Software |  |  |  |  |  | resources none → Software Team |
| 83 | Install OCF Smart Cart Softtware |  | 2016-07-05 → 2016-07-07 (+2d) | 8h → 24h |  |  | resources none → Software Team |
| 84 | WPI & Demo | 2016-07-06 → 2016-07-08 (+2d) | 2016-07-06 → 2016-07-08 (+2d) | 4h → 8h |  |  | resources none → Software Team |
| 85 | Acceptance Testing | 2016-07-06 → 2016-07-11 (+5d) | 2016-07-20 → 2016-07-22 (+2d) |  |  |  | resources none → Software Team |

## Version 3 (saved 2015-04-26)

Note of the change: Formatting of Project file and pdf for individual deliverables 2

Last finish stays 2016-08-09.

Added:

| ID | Task | Duration | Start | Finish |
| --- | --- | --- | --- | --- |
| 1 | **ARKartSmart Project Deployment** | 201d | 2015-11-02 | 2016-08-09 |

## Version 4 (saved 2015-04-26)

Note of the change: Fixed resource allocation warnings for Project file

Last finish 2016-08-09 → 2016-08-10 (+1d).

Added:

| ID | Task | Duration | Start | Finish | Resources |
| --- | --- | --- | --- | --- | --- |
| 5 | Order/Purchase | 8h | 2015-11-04 | 2015-11-05 | Project Manager |
| 6 | Shipping | 80h | 2015-11-02 | 2015-11-16 |  |
| 14 | Order/Purchase | 8h | 2015-11-02 | 2015-11-03 | Project Manager |
| 15 | Shipping | 80h | 2015-11-02 | 2015-11-16 |  |
| 17 | Order/Purchase | 8h | 2015-11-03 | 2015-11-04 | Project Manager |
| 18 | Shipping | 80h | 2015-11-02 | 2015-11-16 |  |
| 26 | Order/Purchase | 8h | 2015-11-05 | 2015-11-06 | Project Manager |
| 27 | Shipping | 80h | 2015-11-02 | 2015-11-16 |  |
| 31 | **Acquire Charging Stations** | 10d | 2015-11-02 | 2015-11-16 | Charging Stations [1000%] |
| 33 | Shipping | 80h | 2015-11-02 | 2015-11-16 |  |
| 38 | **Acquire Mounting Hardware** | 10d | 2015-11-02 | 2015-11-16 | Mounting Hardware [400000%] |
| 40 | Shipping | 80h | 2015-11-02 | 2015-11-16 |  |
| 48 | **Acquire Branding** | 102d | 2015-11-02 | 2016-03-23 |  |
| 50 | Shipping | 80h | 2015-11-02 | 2015-11-16 |  |

Changed:

| ID | Task | Start | Finish | Duration | Total float | Predecessors | Other |
| --- | --- | --- | --- | --- | --- | --- | --- |
| 1 | **ARKartSmart Project Deployment** |  | 2016-08-09 → 2016-08-10 (+1d) | 201d → 202.5d |  |  |  |
| 2 | **Hardware, etc** |  | 2016-08-09 → 2016-08-10 (+1d) | 201d → 202.5d |  |  |  |
| 3 | **Tablets** |  | 2016-03-16 → 2016-04-08 (+23d) | 97d → 114.5d | 92.5d → 76.5d |  |  |
| 4 | **Acquire Nexus 9 Tablets** |  | 2015-11-03 → 2015-11-16 (+13d) | 8h → 10d | 92.5d → 85d |  | was named Order Nexus 9 Tablets; resources Project Manager → Tablets [400000%] |
| 7 | Install Custom ROM | 2015-11-03 → 2015-11-16 (+13d) | 2015-11-10 → 2015-11-23 (+13d) |  | 92.5d → 85d |  | resources Senior Software Engineer → Software Team |
| 8 | Inspect & Test | 2015-11-10 → 2015-11-23 (+13d) | 2015-11-17 → 2015-11-30 (+13d) |  | 92.5d → 85d |  |  |
| 9 | Test Network Connectivity | 2015-11-17 → 2015-11-30 (+13d) | 2015-11-19 → 2015-12-02 (+13d) |  | 92.5d → 85d |  |  |
| 10 | Integrate with ARKSmart Network | 2015-11-20 → 2015-12-03 (+13d) | 2015-11-24 → 2015-12-07 (+13d) |  | 92.5d → 85d |  |  |
| 11 | Mount on Carts | 2015-11-24 → 2015-12-18 (+24d) | 2016-03-16 → 2016-04-08 (+23d) |  | 92.5d → 76.5d |  |  |
| 12 | **Servers** |  | 2015-11-11 → 2015-11-24 (+13d) | 7.5d → 16.5d | 96d → 88.5d |  |  |
| 13 | **Acquire HQ Hardware** |  | 2015-11-03 → 2015-11-16 (+13d) | 8h → 10d | 96d → 88.5d |  | was named Purchase HQ Hardware; resources Project Manager → HQ Servers [200%] |
| 16 | **Acquire Store Hardware** |  | 2015-11-03 → 2015-11-16 (+13d) | 8h → 10d | 96d → 88.5d |  | was named Purchase Store Hardware; resources Project Manager → Store Servers [1000%] |
| 19 | Rack Mount Hardware | 2015-11-03 → 2015-11-16 (+13d) | 2015-11-04 → 2015-11-17 (+13d) |  | 96d → 88.5d |  |  |
| 20 | Install OS | 2015-11-05 → 2015-11-18 (+13d) | 2015-11-06 → 2015-11-19 (+13d) |  | 96d → 88.5d |  |  |
| 21 | Patch OS | 2015-11-06 → 2015-11-19 (+13d) | 2015-11-09 → 2015-11-20 (+11d) |  | 96d → 88.5d |  |  |
| 22 | Configure Rack Mounted Networking | 2015-11-10 → 2015-11-23 (+13d) | 2015-11-10 → 2015-11-23 (+13d) |  | 96d → 88.5d |  |  |
| 23 | Test Rack Mounted Network Connectivity | 2015-11-11 → 2015-11-24 (+13d) | 2015-11-11 → 2015-11-24 (+13d) |  | 96d → 88.5d |  |  |
| 24 | **Barcode Scanners** |  | 2015-12-21 → 2016-06-03 (+165d) | 35d → 154d | 154.5d → 37d |  |  |
| 25 | **Acquire Barcode Scanners** |  | 2015-11-03 → 2015-11-16 (+13d) | 8h → 10d | 158.5d → 45.5d |  | was named Purchase; resources Project Manager → Barcode Scanners [400000%] |
| 28 | Inspect & Test | 2015-11-03 → 2015-11-30 (+27d) | 2015-11-10 → 2015-12-07 (+27d) |  | 158.5d → 45.5d |  |  |
| 29 | Mount on Carts | 2015-11-16 → 2016-04-29 (+165d) | 2015-12-21 → 2016-06-03 (+165d) |  | 154.5d → 37d |  |  |
| 30 | **Charging Stations** |  | 2015-11-18 → 2016-04-29 (+163d) | 12.5d → 129d | 188.5d → 73.5d |  |  |
| 32 | Order/Purchase |  | 2015-11-03 → 2015-11-09 (+6d) |  | 188.5d → 185.5d |  | was named Purchase |
| 34 | Assemble | 2015-11-03 → 2015-11-10 (+7d) | 2015-11-10 → 2015-11-16 (+6d) |  | 188.5d → 185.5d |  |  |
| 35 | Install | 2015-11-10 → 2015-11-17 (+7d) | 2015-11-17 → 2016-04-27 (+162d) |  | 188.5d → 73.5d |  |  |
| 36 | Test | 2015-11-17 → 2016-04-28 (+163d) | 2015-11-18 → 2016-04-29 (+163d) |  | 188.5d → 73.5d |  |  |
| 37 | **Cart Mounting** |  | 2015-11-16 → 2015-12-17 (+31d) | 10d → 33.5d | 98.5d → 37d |  |  |
| 39 | Order/Purchase | 2015-11-02 → 2015-11-06 (+4d) | 2015-11-03 → 2015-11-09 (+6d) |  | 98.5d → 94.5d |  | was named Purchase Hardware |
| 41 | Inspect Hardware | 2015-11-03 → 2015-11-09 (+6d) | 2015-11-16 → 2015-12-17 (+31d) |  | 98.5d → 37d |  |  |
| 42 | **ARKSMart Employee Training** | 2016-07-25 → 2016-07-26 (+1d) | 2016-08-09 → 2016-08-10 (+1d) |  |  |  |  |
| 43 | Tablet & Barcode Scanner Operation | 2016-07-25 → 2016-07-26 (+1d) | 2016-08-04 → 2016-08-08 (+4d) |  |  |  |  |
| 44 | Tablet Repair/Replacement | 2016-08-05 → 2016-08-08 (+3d) | 2016-08-09 → 2016-08-10 (+1d) |  |  |  |  |
| 45 | Barcode Scanner Replacement | 2016-08-05 → 2016-08-08 (+3d) | 2016-08-08 → 2016-08-09 (+1d) |  |  |  |  |
| 46 | **Branding** |  | 2015-12-22 → 2016-06-21 (+182d) | 36d → 166.5d | 165d → 36d |  |  |
| 47 | Tablet Branding Design |  | 2015-11-16 → 2016-03-22 (+127d) |  | 165d → 75.5d |  |  |
| 49 | Order/Purchase Branding for Tablets | 2015-11-16 → 2016-03-22 (+127d) | 2015-11-17 → 2016-03-23 (+127d) |  | 165d → 75.5d |  |  |
| 51 | Install Tablet Branding | 2015-11-17 → 2016-04-11 (+146d) | 2015-12-22 → 2016-06-21 (+182d) |  | 165d → 36d |  |  |
| 52 | **Documentation** | 2015-11-12 → 2015-11-25 (+13d) | 2016-06-20 → 2016-06-21 (+1d) | 157.5d → 150d |  |  |  |
| 53 | ARKSmart Network Configuration | 2015-11-12 → 2015-11-25 (+13d) | 2015-11-18 → 2015-12-08 (+20d) |  | 188.5d → 176d |  |  |
| 54 | Software User Guide | 2016-06-13 → 2016-06-15 (+2d) | 2016-06-20 → 2016-06-21 (+1d) |  |  |  |  |
| 55 | **Software** |  | 2016-07-22 → 2016-07-26 (+4d) | 189.5d → 191d |  |  |  |
| 59 | **Agile Sprint 2 - Software Architecture/Design** |  | 2015-11-12 → 2015-11-16 (+4d) | 6d → 7.5d |  |  |  |
| 62 | COTS Selection/Approval | 2015-11-05 → 2015-11-12 (+7d) | 2015-11-09 → 2015-11-16 (+7d) |  | 3.5d → 0d | none → 60 |  |
| 63 | **Agile Sprint 3 - Software Environment** | 2015-11-13 → 2015-11-16 (+3d) | 2015-11-17 → 2015-11-18 (+1d) |  |  |  |  |
| 64 | Software Lab Environment Setup | 2015-11-13 → 2015-11-16 (+3d) | 2015-11-16 → 2015-11-18 (+2d) |  |  |  |  |
| 65 | Software Lab Environment Validation | 2015-11-17 → 2015-11-18 (+1d) | 2015-11-17 → 2015-11-18 (+1d) |  |  |  |  |
| 66 | Test Tool Selection/Approval/Development | 2015-11-13 → 2015-11-16 (+3d) | 2015-11-16 → 2015-11-18 (+2d) |  |  |  |  |
| 67 | **Agile Sprint 4 - Inventory System** | 2015-11-17 → 2015-11-19 (+2d) | 2016-01-18 → 2016-01-20 (+2d) |  |  |  |  |
| 68 | Inventory System Integration Development | 2015-11-17 → 2015-11-19 (+2d) | 2016-01-05 → 2016-01-06 (+1d) |  |  |  |  |
| 69 | **Testing** | 2016-01-05 → 2016-01-07 (+2d) | 2016-01-18 → 2016-01-19 (+1d) |  |  |  |  |
| 70 | Unit Level Testing | 2016-01-05 → 2016-01-07 (+2d) | 2016-01-13 → 2016-01-14 (+1d) |  |  |  |  |
| 71 | Component Level Testing | 2016-01-13 → 2016-01-15 (+2d) | 2016-01-18 → 2016-01-19 (+1d) |  |  |  |  |
| 72 | WPI & Demo | 2016-01-18 → 2016-01-20 (+2d) | 2016-01-18 → 2016-01-20 (+2d) |  |  |  |  |
| 73 | **Agile Sprint 5 - Customer Loyalty** | 2016-01-19 → 2016-01-20 (+1d) | 2016-03-21 → 2016-03-22 (+1d) |  |  |  |  |
| 74 | Customer Loyalty System Integration Development | 2016-01-19 → 2016-01-20 (+1d) | 2016-03-07 → 2016-03-09 (+2d) |  |  |  |  |
| 75 | **Testing** | 2016-03-08 → 2016-03-09 (+1d) | 2016-03-18 → 2016-03-22 (+4d) |  |  |  |  |
| 76 | Unit Level Testing | 2016-03-08 → 2016-03-09 (+1d) | 2016-03-15 → 2016-03-17 (+2d) |  |  |  |  |
| 77 | Component Level Testing | 2016-03-16 → 2016-03-17 (+1d) | 2016-03-18 → 2016-03-22 (+4d) |  |  |  |  |
| 78 | WPI & Demo | 2016-03-21 → 2016-03-22 (+1d) | 2016-03-21 → 2016-03-22 (+1d) |  |  |  |  |
| 79 | **Agile Sprint 6 - Integration/Test** | 2016-03-21 → 2016-03-23 (+2d) | 2016-04-04 → 2016-04-06 (+2d) |  |  |  |  |
| 80 | **System Level Integration Testing** | 2016-03-21 → 2016-03-23 (+2d) | 2016-04-04 → 2016-04-05 (+1d) |  |  |  |  |
| 81 | Customer Loyalty System Integration Testing | 2016-03-21 → 2016-03-23 (+2d) | 2016-03-28 → 2016-03-29 (+1d) |  |  |  |  |
| 82 | Inventory System Integration Testing | 2016-03-28 → 2016-03-30 (+2d) | 2016-04-04 → 2016-04-05 (+1d) |  |  |  |  |
| 83 | WPI & Demo | 2016-04-04 → 2016-04-06 (+2d) | 2016-04-04 → 2016-04-06 (+2d) |  |  |  |  |
| 84 | **Agile Sprint 7 - OCF Smart Cart Software** | 2016-04-05 → 2016-04-06 (+1d) | 2016-06-13 → 2016-06-14 (+1d) |  |  |  |  |
| 85 | OCF Smart Cart System Integration Development | 2016-04-05 → 2016-04-06 (+1d) | 2016-05-23 → 2016-05-25 (+2d) |  |  |  |  |
| 86 | Software Customization | 2016-05-24 → 2016-05-25 (+1d) | 2016-05-30 → 2016-06-01 (+2d) |  |  |  |  |
| 87 | **Testing** | 2016-05-31 → 2016-06-01 (+1d) | 2016-06-10 → 2016-06-14 (+4d) |  |  |  |  |
| 88 | Unit Level Testing | 2016-05-31 → 2016-06-01 (+1d) | 2016-06-07 → 2016-06-09 (+2d) |  |  |  |  |
| 89 | Component Level Testing | 2016-06-08 → 2016-06-09 (+1d) | 2016-06-10 → 2016-06-14 (+4d) |  |  |  |  |

| ID | Task | Start | Finish |
| --- | --- | --- | --- |
| 90 | WPI & Demo | 2016-06-13 → 2016-06-14 (+1d) | 2016-06-13 → 2016-06-14 (+1d) |
| 91 | **Agile Sprint 8 - OCF Integration/Test** | 2016-06-13 → 2016-06-15 (+2d) | 2016-06-20 → 2016-06-22 (+2d) |
| 92 | **System Level Integration Testing** | 2016-06-13 → 2016-06-15 (+2d) | 2016-06-20 → 2016-06-21 (+1d) |
| 93 | OCF Smart Cart System Integration Testing | 2016-06-13 → 2016-06-15 (+2d) | 2016-06-20 → 2016-06-21 (+1d) |
| 94 | WPI & Demo | 2016-06-20 → 2016-06-22 (+2d) | 2016-06-20 → 2016-06-22 (+2d) |
| 95 | **Agile Sprint 9 - Software Installation** | 2016-06-21 → 2016-06-22 (+1d) | 2016-07-08 → 2016-07-12 (+4d) |
| 96 | Install Customer Loyalty System Integration Software | 2016-06-21 → 2016-06-22 (+1d) | 2016-06-27 → 2016-06-29 (+2d) |
| 97 | Install Inventory System Integration Software | 2016-06-28 → 2016-06-29 (+1d) | 2016-07-04 → 2016-07-06 (+2d) |
| 98 | Install OCF Smart Cart Softtware | 2016-07-05 → 2016-07-06 (+1d) | 2016-07-07 → 2016-07-11 (+4d) |
| 99 | WPI & Demo | 2016-07-08 → 2016-07-11 (+3d) | 2016-07-08 → 2016-07-12 (+4d) |
| 100 | Acceptance Testing | 2016-07-11 → 2016-07-12 (+1d) | 2016-07-22 → 2016-07-26 (+4d) |

## Version 5 (saved 2015-04-27)

Note of the change: Updated Project file to match new resource allocation and split up sprints that are too long

Last finish 2016-08-10 → 2016-10-28 (+79d).

Added:

| ID | Task | Duration | Start | Finish | Predecessors | Resources |
| --- | --- | --- | --- | --- | --- | --- |
| 67 | **Agile Sprint 4 - Inventory System : Phase 1** | 27d | 2015-11-20 | 2015-12-28 | 63 |  |
| 68 | Inventory System Integration Development: Phase 1 | 140h | 2015-11-20 | 2015-12-15 |  | Senior Software Engineer |
| 69 | **Testing** | 9d | 2015-12-15 | 2015-12-28 | 68 |  |
| 70 | Unit Level Testing | 48h | 2015-12-15 | 2015-12-23 |  | Senior Software Engineer |
| 71 | Component Level Testing | 24h | 2015-12-23 | 2015-12-28 | 70 | Software Team |
| 72 | WPI & Demo | 4h | 2015-12-28 | 2015-12-28 | 69 | Software Team; Project Manager |
| 79 | **Agiles Sprint 6 - Customer Loyalty: Phase 1** | 27d | 2016-02-04 | 2016-03-11 | 73 |  |
| 80 | Customer Loyalty System Integration Development: Phase 1 | 140h | 2016-02-04 | 2016-02-29 |  | Senior Software Engineer |
| 81 | **Testing** | 9d | 2016-02-29 | 2016-03-11 | 80 |  |
| 82 | Unit Level Testing | 48h | 2016-02-29 | 2016-03-08 |  | Senior Software Engineer |
| 83 | Component Level Testing | 24h | 2016-03-08 | 2016-03-11 | 82 | Software Team |
| 84 | WPI & Demo | 4h | 2016-03-11 | 2016-03-11 | 81 | Software Team; Project Manager |
| 96 | **Agile Sprint 9 - OCF Smart Cart Software: Phase 1** | 29.5d | 2016-04-21 | 2016-06-01 | 91 |  |
| 97 | OCF Smart Cart System Integration Development: Phase 1 | 140h | 2016-04-21 | 2016-05-16 |  | Senior Software Engineer |
| 98 | Software Customization: Phase 1 | 20h | 2016-05-16 | 2016-05-18 | 97 | Senior Software Engineer |
| 99 | **Testing** | 9d | 2016-05-19 | 2016-05-31 | 98 |  |
| 100 | Unit Level Testing | 48h | 2016-05-19 | 2016-05-26 |  | Senior Software Engineer |
| 101 | Component Level Testing | 24h | 2016-05-27 | 2016-05-31 | 100 | Software Team |
| 102 | WPI & Demo | 4h | 2016-06-01 | 2016-06-01 | 99 | Software Team; Project Manager |
| 120 | Closing Tasks | 80h | 2016-10-17 | 2016-10-28 | 2, 55 | Installation Support; Network Engineer; Project Manager; Senior Software Engineer; Software Team; Systems Administrator |

Changed:

| ID | Task | Start | Finish | Duration | Total float | Predecessors | Other |
| --- | --- | --- | --- | --- | --- | --- | --- |
| 1 | **ARKartSmart Project Deployment** |  | 2016-08-10 → 2016-10-28 (+79d) | 202.5d → 259.5d |  |  |  |
| 2 | **Hardware, etc** |  | 2016-08-10 → 2016-10-14 (+65d) | 202.5d → 249.5d |  |  |  |
| 5 | Order/Purchase | 2015-11-04 → 2015-11-05 (+1d) | 2015-11-05 → 2015-11-10 (+5d) |  | 90.5d → 89d |  |  |
| 42 | **ARKSMart Employee Training** | 2016-07-26 → 2016-09-29 (+65d) | 2016-08-10 → 2016-10-14 (+65d) |  |  |  |  |
| 43 | Tablet & Barcode Scanner Operation | 2016-07-26 → 2016-09-29 (+65d) | 2016-08-08 → 2016-10-12 (+65d) |  |  |  |  |
| 44 | Tablet Repair/Replacement | 2016-08-08 → 2016-10-12 (+65d) | 2016-08-10 → 2016-10-14 (+65d) |  |  |  |  |
| 45 | Barcode Scanner Replacement | 2016-08-08 → 2016-10-12 (+65d) | 2016-08-09 → 2016-10-13 (+65d) |  |  |  |  |
| 46 | **Branding** |  | 2016-06-21 → 2016-08-25 (+65d) | 166.5d → 213.5d |  |  |  |
| 47 | Tablet Branding Design |  | 2016-03-22 → 2016-02-02 (-49d) |  | 75.5d → 36d |  |  |
| 48 | **Acquire Branding** |  | 2016-03-23 → 2016-02-03 (-49d) | 102d → 67d | 100.5d → 102d |  |  |
| 49 | Order/Purchase Branding for Tablets | 2016-03-22 → 2016-02-02 (-49d) | 2016-03-23 → 2016-02-03 (-49d) |  | 75.5d → 36d |  |  |
| 51 | Install Tablet Branding | 2016-04-11 → 2016-06-15 (+65d) | 2016-06-21 → 2016-08-25 (+65d) |  |  |  |  |
| 52 | **Documentation** |  | 2016-06-21 → 2016-07-19 (+28d) | 150d → 170d | 36d → 63d |  |  |
| 54 | Software User Guide | 2016-06-15 → 2016-07-13 (+28d) | 2016-06-21 → 2016-07-19 (+28d) |  | 36d → 63d |  |  |
| 55 | **Software** |  | 2016-07-26 → 2016-09-29 (+65d) | 191d → 238d |  |  |  |
| 58 | Work Product Inspection (WPI) - Software Requirements Review |  |  |  |  |  | resources Software Team → Software Team; Project Manager |
| 59 | **Agile Sprint 2 - Software Architecture/Design** |  | 2015-11-16 → 2015-11-17 (+1d) | 7.5d → 8.5d |  |  |  |
| 61 | WPI - Software Design Review |  |  |  | 1.5d → 2.5d |  | resources Software Team → Software Team; Project Manager |
| 62 | COTS Selection/Approval |  | 2015-11-16 → 2015-11-17 (+1d) | 20h → 28h |  |  | resources Senior Software Engineer → Senior Software Engineer; Project Manager |
| 63 | **Agile Sprint 3 - Software Environment** | 2015-11-16 → 2015-11-17 (+1d) | 2015-11-18 → 2015-11-19 (+1d) |  |  |  |  |
| 64 | Software Lab Environment Setup | 2015-11-16 → 2015-11-17 (+1d) | 2015-11-18 → 2015-11-19 (+1d) |  |  |  |  |
| 65 | Software Lab Environment Validation | 2015-11-18 → 2015-11-19 (+1d) | 2015-11-18 → 2015-11-19 (+1d) |  |  |  |  |
| 66 | Test Tool Selection/Approval/Development | 2015-11-16 → 2015-11-17 (+1d) | 2015-11-18 → 2015-11-19 (+1d) |  |  |  | resources Software Team → Software Team; Project Manager |
| 73 | **Agile Sprint 5 - Inventory System: Phase 2** | 2015-11-19 → 2015-12-29 (+40d) | 2016-01-20 → 2016-02-03 (+14d) | 44.5d → 27d |  | 63 → 67 | was named Agile Sprint 4 - Inventory System |
| 74 | Inventory System Integration Development: Phase 2 | 2015-11-19 → 2015-12-29 (+40d) | 2016-01-06 → 2016-01-21 (+15d) | 280h → 140h |  |  | was named Inventory System Integration Development |
| 75 | **Testing** | 2016-01-07 → 2016-01-21 (+14d) | 2016-01-19 → 2016-02-03 (+15d) |  |  |  |  |
| 76 | Unit Level Testing | 2016-01-07 → 2016-01-21 (+14d) | 2016-01-14 → 2016-01-29 (+15d) |  |  |  |  |
| 77 | Component Level Testing | 2016-01-15 → 2016-01-29 (+14d) | 2016-01-19 → 2016-02-03 (+15d) |  |  |  |  |
| 78 | WPI & Demo | 2016-01-20 → 2016-02-03 (+14d) | 2016-01-20 → 2016-02-03 (+14d) |  |  |  | resources Software Team → Software Team; Project Manager |
| 85 | **Agile Sprint 7 - Customer Loyalty: Phase 2** | 2016-01-20 → 2016-03-14 (+54d) | 2016-03-22 → 2016-04-19 (+28d) | 44.5d → 27d |  | 73 → 79 | was named Agile Sprint 5 - Customer Loyalty |
| 86 | Customer Loyalty System Integration Development: Phase 2 | 2016-01-20 → 2016-03-14 (+54d) | 2016-03-09 → 2016-04-06 (+28d) | 280h → 140h |  |  | was named Customer Loyalty System Integration Development |
| 87 | **Testing** | 2016-03-09 → 2016-04-06 (+28d) | 2016-03-22 → 2016-04-19 (+28d) |  | 0d → 128d |  |  |
| 88 | Unit Level Testing | 2016-03-09 → 2016-04-06 (+28d) | 2016-03-17 → 2016-04-14 (+28d) |  | 0d → 128d |  |  |
| 89 | Component Level Testing | 2016-03-17 → 2016-04-14 (+28d) | 2016-03-22 → 2016-04-19 (+28d) |  | 0d → 128d |  |  |
| 90 | WPI & Demo | 2016-03-22 → 2016-04-19 (+28d) | 2016-03-22 → 2016-04-19 (+28d) |  | 0d → 128d |  | resources Software Team → Software Team; Project Manager |
| 91 | **Agile Sprint 8 - Integration/Test** | 2016-03-23 → 2016-04-06 (+14d) | 2016-04-06 → 2016-04-20 (+14d) |  |  | 85 → 86 | was named Agile Sprint 6 - Integration/Test |
| 92 | **System Level Integration Testing** | 2016-03-23 → 2016-04-06 (+14d) | 2016-04-05 → 2016-04-20 (+15d) |  |  |  |  |
| 93 | Customer Loyalty System Integration Testing | 2016-03-23 → 2016-04-06 (+14d) | 2016-03-29 → 2016-04-13 (+15d) |  |  |  |  |
| 94 | Inventory System Integration Testing | 2016-03-30 → 2016-04-13 (+14d) | 2016-04-05 → 2016-04-20 (+15d) |  |  |  |  |
| 95 | WPI & Demo | 2016-04-06 → 2016-04-20 (+14d) | 2016-04-06 → 2016-04-20 (+14d) |  |  |  | resources Software Team → Software Team; Project Manager |
| 103 | **Agile Sprint 10 - OCF Smart Cart Software: Phase 2** | 2016-04-06 → 2016-06-01 (+56d) | 2016-06-14 → 2016-07-12 (+28d) | 49.5d → 29.5d |  | 91 → 96 | was named Agile Sprint 7 - OCF Smart Cart Software |
| 104 | OCF Smart Cart System Integration Development: Phase 2 | 2016-04-06 → 2016-06-01 (+56d) | 2016-05-25 → 2016-06-24 (+30d) | 280h → 140h |  |  | was named OCF Smart Cart System Integration Development |
| 105 | Software Customization: Phase 2 | 2016-05-25 → 2016-06-27 (+33d) | 2016-06-01 → 2016-06-29 (+28d) | 40h → 20h |  |  | was named Software Customization |
| 106 | **Testing** | 2016-06-01 → 2016-06-29 (+28d) | 2016-06-14 → 2016-07-12 (+28d) |  |  |  |  |
| 107 | Unit Level Testing | 2016-06-01 → 2016-06-29 (+28d) | 2016-06-09 → 2016-07-07 (+28d) |  |  |  |  |
| 108 | Component Level Testing | 2016-06-09 → 2016-07-07 (+28d) | 2016-06-14 → 2016-07-12 (+28d) |  |  |  |  |
| 109 | WPI & Demo | 2016-06-14 → 2016-07-12 (+28d) | 2016-06-14 → 2016-07-12 (+28d) |  |  |  | resources Software Team → Software Team; Project Manager |
| 110 | **Agile Sprint 11 - OCF Integration/Test** | 2016-06-15 → 2016-07-13 (+28d) | 2016-06-22 → 2016-07-20 (+28d) |  |  |  | was named Agile Sprint 8 - OCF Integration/Test |
| 111 | **System Level Integration Testing** | 2016-06-15 → 2016-07-13 (+28d) | 2016-06-21 → 2016-07-19 (+28d) |  |  |  |  |
| 112 | OCF Smart Cart System Integration Testing | 2016-06-15 → 2016-07-13 (+28d) | 2016-06-21 → 2016-07-19 (+28d) |  |  |  |  |
| 113 | WPI & Demo | 2016-06-22 → 2016-07-20 (+28d) | 2016-06-22 → 2016-07-20 (+28d) |  |  |  | resources Software Team → Software Team; Project Manager |
| 114 | **Agile Sprint 12 - Software Installation** | 2016-06-22 → 2016-07-20 (+28d) | 2016-07-12 → 2016-08-04 (+23d) | 14d → 11d |  |  | was named Agile Sprint 9 - Software Installation |
| 115 | Install Customer Loyalty System Integration Software | 2016-06-22 → 2016-07-20 (+28d) | 2016-06-29 → 2016-07-22 (+23d) | 40h → 20h |  |  |  |
| 116 | Install Inventory System Integration Software | 2016-06-29 → 2016-07-25 (+26d) | 2016-07-06 → 2016-07-27 (+21d) | 40h → 20h |  |  |  |
| 117 | Install OCF Smart Cart Softtware | 2016-07-06 → 2016-07-27 (+21d) | 2016-07-11 → 2016-08-03 (+23d) | 24h → 40h |  |  |  |
| 118 | WPI & Demo | 2016-07-11 → 2016-08-03 (+23d) | 2016-07-12 → 2016-08-04 (+23d) |  |  |  | resources Software Team → Software Team; Project Manager |
| 119 | Acceptance Testing | 2016-07-12 → 2016-08-04 (+23d) | 2016-07-26 → 2016-09-29 (+65d) | 80h → 320h |  |  | resources Software Team → Software Team; Project Manager; Network Engineer [50%]; Systems Administrator [50%] |

## Version 6 (saved 2015-04-27)

Note of the change: Fixed errors in schedule and material resources

Last finish stays 2016-10-28.

Changed:

| ID | Task | Start | Finish | Duration | Total float | Predecessors | Other |
| --- | --- | --- | --- | --- | --- | --- | --- |
| 1 | **ARKartSmart Project Deployment** |  |  | 259.5d → 259d |  |  |  |
| 2 | **Hardware, etc** |  |  | 249.5d → 249d |  |  |  |
| 43 | Tablet & Barcode Scanner Operation |  | 2016-10-12 → 2016-10-11 (-1d) |  |  |  |  |
| 48 | **Acquire Branding** |  |  |  | 102d → 101.5d |  | resources none → Branding [400000%] |
| 52 | **Documentation** |  | 2016-07-19 → 2016-08-02 (+14d) | 170d → 179.5d | 63d → 53d |  |  |
| 54 | Software User Guide | 2016-07-13 → 2016-07-26 (+13d) | 2016-07-19 → 2016-08-02 (+14d) |  | 63d → 53d |  |  |
| 55 | **Software** |  | 2016-09-29 → 2016-09-28 (-1d) | 238d → 237.5d |  |  |  |
| 91 | **Agile Sprint 8 - Integration/Test** | 2016-04-06 → 2016-04-20 (+14d) | 2016-04-20 → 2016-05-04 (+14d) |  |  | 86 → 85 |  |
| 92 | **System Level Integration Testing** | 2016-04-06 → 2016-04-20 (+14d) | 2016-04-20 → 2016-05-03 (+13d) |  |  |  |  |
| 93 | Customer Loyalty System Integration Testing | 2016-04-06 → 2016-04-20 (+14d) | 2016-04-13 → 2016-04-26 (+13d) |  |  |  |  |
| 94 | Inventory System Integration Testing | 2016-04-13 → 2016-04-27 (+14d) | 2016-04-20 → 2016-05-03 (+13d) |  |  |  |  |
| 95 | WPI & Demo | 2016-04-20 → 2016-05-04 (+14d) | 2016-04-20 → 2016-05-04 (+14d) |  |  |  |  |
| 96 | **Agile Sprint 9 - OCF Smart Cart Software: Phase 1** | 2016-04-21 → 2016-05-04 (+13d) | 2016-06-01 → 2016-06-14 (+13d) |  |  |  |  |
| 97 | OCF Smart Cart System Integration Development: Phase 1 | 2016-04-21 → 2016-05-04 (+13d) | 2016-05-16 → 2016-05-27 (+11d) |  |  |  |  |
| 98 | Software Customization: Phase 1 | 2016-05-16 → 2016-05-30 (+14d) | 2016-05-18 → 2016-06-01 (+14d) |  |  |  |  |
| 99 | **Testing** | 2016-05-19 → 2016-06-01 (+13d) | 2016-05-31 → 2016-06-14 (+14d) |  |  |  |  |
| 100 | Unit Level Testing | 2016-05-19 → 2016-06-01 (+13d) | 2016-05-26 → 2016-06-09 (+14d) |  |  |  |  |
| 101 | Component Level Testing | 2016-05-27 → 2016-06-09 (+13d) | 2016-05-31 → 2016-06-14 (+14d) |  |  |  |  |
| 102 | WPI & Demo | 2016-06-01 → 2016-06-14 (+13d) | 2016-06-01 → 2016-06-14 (+13d) |  |  |  |  |
| 103 | **Agile Sprint 10 - OCF Smart Cart Software: Phase 2** | 2016-06-01 → 2016-06-15 (+14d) | 2016-07-12 → 2016-07-26 (+14d) |  |  |  |  |
| 104 | OCF Smart Cart System Integration Development: Phase 2 | 2016-06-01 → 2016-06-15 (+14d) | 2016-06-24 → 2016-07-08 (+14d) |  |  |  |  |
| 105 | Software Customization: Phase 2 | 2016-06-27 → 2016-07-08 (+11d) | 2016-06-29 → 2016-07-12 (+13d) |  |  |  |  |
| 106 | **Testing** | 2016-06-29 → 2016-07-13 (+14d) | 2016-07-12 → 2016-07-25 (+13d) |  |  |  |  |
| 107 | Unit Level Testing | 2016-06-29 → 2016-07-13 (+14d) | 2016-07-07 → 2016-07-20 (+13d) |  |  |  |  |
| 108 | Component Level Testing | 2016-07-07 → 2016-07-21 (+14d) | 2016-07-12 → 2016-07-25 (+13d) |  |  |  |  |
| 109 | WPI & Demo | 2016-07-12 → 2016-07-26 (+14d) | 2016-07-12 → 2016-07-26 (+14d) |  |  |  |  |
| 110 | **Agile Sprint 11 - OCF Integration/Test** | 2016-07-13 → 2016-07-26 (+13d) | 2016-07-20 → 2016-08-02 (+13d) |  |  |  |  |
| 111 | **System Level Integration Testing** | 2016-07-13 → 2016-07-26 (+13d) | 2016-07-19 → 2016-08-02 (+14d) |  |  |  |  |
| 112 | OCF Smart Cart System Integration Testing | 2016-07-13 → 2016-07-26 (+13d) | 2016-07-19 → 2016-08-02 (+14d) |  |  |  |  |
| 113 | WPI & Demo | 2016-07-20 → 2016-08-02 (+13d) | 2016-07-20 → 2016-08-02 (+13d) |  |  |  |  |
| 114 | **Agile Sprint 12 - Software Installation** | 2016-07-20 → 2016-08-03 (+14d) | 2016-08-04 → 2016-08-17 (+13d) |  |  |  |  |
| 115 | Install Customer Loyalty System Integration Software | 2016-07-20 → 2016-08-03 (+14d) | 2016-07-22 → 2016-08-05 (+14d) |  |  |  |  |
| 116 | Install Inventory System Integration Software | 2016-07-25 → 2016-08-05 (+11d) | 2016-07-27 → 2016-08-09 (+13d) |  |  |  |  |
| 117 | Install OCF Smart Cart Softtware | 2016-07-27 → 2016-08-10 (+14d) | 2016-08-03 → 2016-08-16 (+13d) |  |  |  |  |
| 118 | WPI & Demo | 2016-08-03 → 2016-08-17 (+14d) | 2016-08-04 → 2016-08-17 (+13d) |  |  |  |  |
| 119 | Acceptance Testing | 2016-08-04 → 2016-08-18 (+14d) | 2016-09-29 → 2016-09-28 (-1d) | 320h → 240h |  |  |  |
| 120 | Closing Tasks | 2016-10-17 → 2016-10-14 (-3d) |  |  |  |  |  |
